Schedule from MS Project, 2013-01-07 to 2013-01-11, status date 2013-01-09, A marks actual dates.
Microsoft

## Calendars

- 标准: Mon-Fri 08:00-12:00, 13:00-17:00; Sat-Sun off.

## Resources

| Resource |
| --- |
| 谢国正 |
| 陈文权 |
| 樊宁辉 |
| 翁增仁 |

## Schedule

| ID | WBS | Task | Duration | Start | Finish | Predecessors | Complete | Remaining | Total slack | Free slack | Resources | Work | Actual work |
| --- | --- | --- | --- | --- | --- | --- | --- | --- | --- | --- | --- | --- | --- |
| 1 | 1 | **宁波银行统一开发平台选型POC** | 4.75d | 2013-01-07 09:00 A | 2013-01-11 16:00 |  | 34% | 3.11d | 0d |  |  | 134h | 42h |
| 2 | 1.1 | **需求分析** | 0.75d | 2013-01-07 09:00 A | 2013-01-07 16:00 A |  | 100% |  |  |  |  | 6h | 6h |
| 3 | 1.1.1 | POC需求分析 | 0.25d | 2013-01-07 09:00 A | 2013-01-07 11:00 A |  | 100% |  |  |  | 谢国正 | 2h | 2h |
| 4 | 1.1.2 | POC用户场景编写 | 0.5d | 2013-01-07 11:00 A | 2013-01-07 16:00 A | 3 | 100% |  |  |  | 谢国正 | 4h | 4h |
| 5 | 1.2 | **设计** | 0.5d | 2013-01-07 16:00 A | 2013-01-08 11:00 A |  | 100% |  |  |  |  | 8h | 8h |
| 6 | 1.2.1 | POC概要设计 | 0.5d | 2013-01-07 16:00 A | 2013-01-08 11:00 A | 4 | 100% |  |  |  | 谢国正 | 4h | 4h |
| 7 | 1.2.2 | POC数据模型设计 | 0.5d | 2013-01-07 16:00 A | 2013-01-08 11:00 A | 4 | 100% |  |  |  | 陈文权 | 4h | 4h |
| 8 | 1.3 | **开发** | 3.25d | 2013-01-07 09:00 A | 2013-01-10 11:00 |  | 46% | 1.76d | 1d | 0d |  | 48h | 22h |
| 9 | 1.3.1 | 开发环境搭建 | 0.5d | 2013-01-07 09:00 A | 2013-01-07 14:00 A |  | 100% |  |  |  | 樊宁辉 | 4h | 4h |
| 10 | 1.3.2 | 客户信息录入与复核功能开发 | 2d | 2013-01-08 11:00 A | 2013-01-10 11:00 | 7 | 38% | 1.25d | 1d | 0d | 翁增仁 | 16h | 6h |
| 11 | 1.3.3 | 批处理功能开发 | 2d | 2013-01-08 11:00 A | 2013-01-10 11:00 | 7 | 38% | 1.25d | 0d |  | 陈文权 | 16h | 6h |
| 12 | 1.3.4 | 报表开发 | 1.5d | 2013-01-08 11:00 A | 2013-01-09 16:00 | 7 | 50% | 0.75d | 0d |  | 樊宁辉 | 12h | 6h |
| 13 | 1.4 | **测试** | 2d | 2013-01-09 16:00 | 2013-01-11 16:00 |  |  |  | 0d |  |  | 40h |  |
| 14 | 1.4.1 | 集成测试 | 0.5d | 2013-01-10 11:00 | 2013-01-10 16:00 | 8 |  |  | 1d |  | 陈文权; 樊宁辉; 翁增仁; 谢国正 | 16h |  |
| 15 | 1.4.2 | 功能测试 | 2d | 2013-01-09 16:00 | 2013-01-11 16:00 | 12 |  |  | 0d |  | 樊宁辉 | 16h |  |
| 16 | 1.4.3 | **性能测试** | 0.5d | 2013-01-10 11:00 | 2013-01-10 16:00 |  |  |  | 0d |  |  | 8h |  |
| 17 | 1.4.3.1 | 批处理功能性能测试 | 0.5d | 2013-01-10 11:00 | 2013-01-10 16:00 | 11 |  |  | 0d |  | 陈文权 | 4h |  |
| 18 | 1.4.3.2 | 录入复核功能性能测试 | 0.5d | 2013-01-10 11:00 | 2013-01-10 16:00 | 10 |  |  | 1d |  | 翁增仁 | 4h |  |
| 19 | 1.5 | **知识转移** | 3.5d | 2013-01-08 11:00 A | 2013-01-11 16:00 |  | 19% | 2.84d | 0d |  |  | 32h | 6h |
| 20 | 1.5.1 | 汇报材料整理及编写 | 1.5d | 2013-01-08 11:00 A | 2013-01-09 16:00 | 6 | 50% | 0.75d | 0.5d | 0d | 谢国正 | 12h | 6h |
| 21 | 1.5.2 | 虚拟机环境搭建 | 1d | 2013-01-10 16:00 | 2013-01-11 16:00 | 17 |  |  | 0d |  | 陈文权 | 8h |  |
| 22 | 1.5.3 | 开发过程介绍资料编写 | 1.5d | 2013-01-09 16:00 | 2013-01-11 11:00 | 20 |  |  | 0.5d |  | 谢国正 | 12h |  |
